Schedule from MS Project, 2012-05-03 to 2013-01-31.

## Calendars

- 标准: Mon-Fri 08:00-12:00, 13:00-17:00; Sat-Sun off. Exceptions (off unless hours are given): 2012-06-22 to 2012-06-24 (端午), 2012-09-29 08:00-12:00, 13:00-17:00, 2012-09-30 to 2012-10-07 (中秋及国庆).

## Resources

| Resource |
| --- |
| 曾志超 |
| 杨敏 |
| IC |
| KeyUser |
| LC |
| SA |
| 熊超群 |
| IC1 |

## Schedule

| ID | WBS | Task | Duration | Start | Finish | Predecessors | Total slack | Free slack | Constraint | Resources | Work |
| --- | --- | --- | --- | --- | --- | --- | --- | --- | --- | --- | --- |
| 1 | 1 | **149厂三维工艺协同管理平台项目WBS** | 191d | 2012-05-03 | 2013-01-31 |  | 0d |  | start no earlier than 2012-05-03 |  | 792h |
| 2 | 1.1 | **M1 项目初始化及准备工作** | 17d | 2012-05-03 | 2012-05-25 |  | 0d |  |  |  | 56h |
| 3 | 1.1.1 | 项目前期准备 | 7d | 2012-05-03 | 2012-05-11 |  | 6d | 0d | finish no earlier than 2012-05-11 |  |  |
| 4 | 1.1.2 | 项目计划制定 | 1d | 2012-05-14 | 2012-05-14 | 3 | 6d | 0d |  |  |  |
| 5 | 1.1.3 | 访谈计划、提纲准备 | 2d | 2012-05-15 | 2012-05-16 | 4 | 6d | 0d |  | 曾志超 | 16h |
| 6 | 1.1.4 | 项目计划、访谈前期准备工作交流 | 1d | 2012-05-17 | 2012-05-17 | 5 | 6d |  |  | 曾志超 | 8h |
| 7 | 1.1.5 | Windchill培训测试系统安装 | 1d | 2012-05-23 | 2012-05-23 |  | 0d |  | must finish on 2012-05-23 |  |  |
| 8 | 1.1.6 | Windchill系统概念培训（PDMLink/MPMLink） | 2d | 2012-05-24 | 2012-05-25 | 7 | 0d |  | finish no earlier than 2012-05-25 | 曾志超; 杨敏 | 32h |
| 9 | 1.2 | **M2 需求调研与方案设计** | 29d | 2012-05-28 | 2012-07-06 | 2 | 0d |  |  |  |  |
| 10 | 1.2.1 | **业务需求调研** | 15d | 2012-05-28 | 2012-06-15 |  | 0d |  |  |  |  |
| 11 | 1.2.1.1 | 了解149厂基本情况/工艺设计总体业务过程 | 1d | 2012-05-28 | 2012-05-28 |  | 0d |  |  |  |  |
| 12 | 1.2.1.2 | 文档管理 | 0.5d | 2012-05-29 | 2012-05-29 | 11 | 0d |  |  |  |  |
| 13 | 1.2.1.3 | EBOM到PBOM重构与管理 | 0.5d | 2012-05-29 | 2012-05-29 | 12 | 0d |  |  |  |  |
| 14 | 1.2.1.4 | 三维工艺设计管理 | 3d | 2012-05-30 | 2012-06-01 | 13 | 0d |  |  |  |  |
| 15 | 1.2.1.5 | 工艺更改管理 | 1d | 2012-06-04 | 2012-06-04 | 14 | 0d |  |  |  |  |
| 16 | 1.2.1.6 | 工装设计数据管理 | 1d | 2012-06-05 | 2012-06-05 | 15 | 0d |  |  |  |  |
| 17 | 1.2.1.7 | Windchill/天河CAPP集成 | 2d | 2012-06-06 | 2012-06-07 | 16 | 0d |  |  |  |  |
| 18 | 1.2.1.8 | Windchill与ERP信息交换 | 1d | 2012-06-08 | 2012-06-08 | 17 | 0d |  |  |  |  |
| 19 | 1.2.1.9 | 历史数据整理与导入 | 1d | 2012-06-11 | 2012-06-11 | 18 | 0d |  |  |  |  |
| 20 | 1.2.1.10 | 系统安全保密改造 | 1d | 2012-06-12 | 2012-06-12 | 19 | 0d |  |  |  |  |
| 21 | 1.2.1.11 | 自主研发产品设计数据管理 | 1d | 2012-06-13 | 2012-06-13 | 20 | 0d |  |  |  |  |
| 22 | 1.2.1.12 | 补充访谈 | 2d | 2012-06-14 | 2012-06-15 | 21 | 0d |  |  |  |  |
| 23 | 1.2.2 | **系统方案定义** | 14d | 2012-06-18 | 2012-07-06 | 10 | 0d |  |  |  |  |
| 24 | 1.2.2.1 | SDD文档编写 | 10d | 2012-06-18 | 2012-07-02 |  | 0d |  |  |  |  |
| 25 | 1.2.2.2 | SDD初稿评审会议 | 1d | 2012-07-03 | 2012-07-03 | 24 | 0d |  |  |  |  |
| 26 | 1.2.2.3 | SDD文档修改 | 2d | 2012-07-04 | 2012-07-05 | 25 | 0d |  |  |  |  |
| 27 | 1.2.2.4 | SDD文档评审会议 | 1d | 2012-07-06 | 2012-07-06 | 26 | 0d |  |  |  |  |

| ID | WBS | Task | Duration | Start | Finish | Predecessors | Total slack | Free slack | Resources | Work |
| --- | --- | --- | --- | --- | --- | --- | --- | --- | --- | --- |
| 28 | 1.3 | **M3 方案开发与功能测试** | 52d | 2012-07-09 | 2012-09-18 | 9 | 0d |  |  | 736h |
| 29 | 1.3.1 | **项目阶段管理** | 1d | 2012-07-09 | 2012-07-09 |  | 51d |  |  |  |
| 30 | 1.3.1.1 | 定义开发计划 | 1d | 2012-07-09 | 2012-07-09 |  | 51d |  |  |  |
| 31 | 1.3.2 | Windchill10测试环境部署 | 1d | 2012-07-09 | 2012-07-09 |  | 0d |  |  |  |
| 32 | 1.3.3 | **Windchill10系统配置** | 7d | 2012-07-10 | 2012-07-18 | 31 | 0d |  |  | 56h |
| 33 | 1.3.3.1 | 文档存储与组织配置 | 0.5d | 2012-07-10 | 2012-07-10 |  | 0d |  | IC | 4h |
| 34 | 1.3.3.2 | 文档权限控制系统配置 | 0.5d | 2012-07-10 | 2012-07-10 | 33 | 0d |  | IC | 4h |
| 35 | 1.3.3.3 | 图文档生命周期系统配置 | 0.5d | 2012-07-11 | 2012-07-11 | 34 | 0d |  | IC | 4h |
| 36 | 1.3.3.4 | 图文档类型系统配置 | 0.5d | 2012-07-11 | 2012-07-11 | 35 | 0d |  | IC | 4h |
| 37 | 1.3.3.5 | 图文档属性系统配置 | 0.5d | 2012-07-12 | 2012-07-12 | 36 | 0d |  | IC | 4h |
| 38 | 1.3.3.6 | 图文档编码规则系统配置 | 0.5d | 2012-07-12 | 2012-07-12 | 37 | 0d |  | IC | 4h |
| 39 | 1.3.3.7 | 文件审批业务流程系统配置 | 1d | 2012-07-13 | 2012-07-13 | 38 | 0d |  | IC | 8h |
| 40 | 1.3.3.8 | CAD文件审批业务流程系统配置 | 1d | 2012-07-16 | 2012-07-16 | 39 | 0d |  | IC | 8h |
| 41 | 1.3.3.9 | 文件变更业务流程系统配置 | 1d | 2012-07-17 | 2012-07-17 | 40 | 0d |  | IC | 8h |
| 42 | 1.3.3.10 | 三维工艺文件属性系统配置 | 1d | 2012-07-18 | 2012-07-18 | 41 | 0d |  | IC | 8h |
| 43 | 1.3.4 | **Windchill10系统开发** | 29d | 2012-07-19 | 2012-08-28 | 32 | 0d |  |  | 680h |
| 44 | 1.3.4.1 | PDMLink相关其它功能开发 | 13d | 2012-07-19 | 2012-08-06 |  | 3d | 0d | IC | 104h |
| 45 | 1.3.4.2 | 数据接收管理功能开发 | 13d | 2012-08-07 | 2012-08-23 | 44 | 3d |  | IC | 104h |
| 46 | 1.3.4.3 | 三维工艺相关功能开发 | 13d | 2012-07-19 | 2012-08-06 |  | 0d |  | IC1 | 104h |
| 47 | 1.3.4.4 | 三维工艺验证系统应用培训、指导 | 15d | 2012-08-07 | 2012-08-27 | 46 | 1d |  | 曾志超; 杨敏 | 240h |
| 48 | 1.3.4.5 | Windchill/天河CAPP集成接口开发 | 8d | 2012-08-07 | 2012-08-16 | 46 | 0d |  | IC1 | 64h |
| 49 | 1.3.4.6 | Windchill/ERP集成开发 | 8d | 2012-08-17 | 2012-08-28 | 48 | 0d |  | IC1 | 64h |
| 50 | 1.3.5 | **系统测试** | 15d | 2012-08-29 | 2012-09-18 | 43 | 0d |  |  |  |
| 51 | 1.3.5.1 | **UAT测试** | 10d | 2012-08-29 | 2012-09-11 |  | 0d |  |  |  |
| 52 | 1.3.5.1.1 | KeyUserTraining | 1d | 2012-08-29 | 2012-08-29 |  | 0d |  |  |  |
| 53 | 1.3.5.1.2 | 撰写UAT测试脚本 | 1d | 2012-08-30 | 2012-08-30 | 52 | 0d |  |  |  |
| 54 | 1.3.5.1.3 | UAT测试 | 4d | 2012-08-31 | 2012-09-05 | 53 | 0d |  |  |  |
| 55 | 1.3.5.1.4 | 修复UAT测试问题 | 3d | 2012-09-06 | 2012-09-10 | 54 | 0d |  |  |  |
| 56 | 1.3.5.1.5 | 撰写UAT测试报告 | 1d | 2012-09-11 | 2012-09-11 | 55 | 0d |  |  |  |

| ID | WBS | Task | Duration | Start | Finish | Predecessors | Total slack | Constraint |
| --- | --- | --- | --- | --- | --- | --- | --- | --- |
| 57 | 1.3.5.2 | **EndUserTraining** | 5d | 2012-09-12 | 2012-09-18 | 51 | 0d |  |
| 58 | 1.3.5.2.1 | 撰写培训教材 | 2d | 2012-09-12 | 2012-09-13 |  | 0d |  |
| 59 | 1.3.5.2.2 | 课程培训 | 3d | 2012-09-14 | 2012-09-18 | 58 | 0d | start no earlier than 2012-09-13 |
| 60 | 1.4 | **M4 生产系统部署与试运行** | 27d | 2012-09-19 | 2012-10-31 | 28 | 0d |  |
| 61 | 1.4.1 | **项目管理** | 1d | 2012-09-19 | 2012-09-19 |  | 0d |  |
| 62 | 1.4.1.1 | 项目初始化与项目规划 | 1d | 2012-09-19 | 2012-09-19 |  | 0d |  |
| 63 | 1.4.2 | **生产系统部署** | 5d | 2012-09-20 | 2012-09-26 | 61 | 0d |  |
| 64 | 1.4.2.1 | 更新部署生产系统 | 2d | 2012-09-20 | 2012-09-21 |  | 0d |  |
| 65 | 1.4.2.2 | 代码移交及说明文档编制 | 3d | 2012-09-24 | 2012-09-26 | 64 | 0d |  |
| 66 | 1.4.3 | 系统上线试运行 | 21d | 2012-09-27 | 2012-10-31 | 63 | 0d |  |
| 67 | 1.5 | **M5 系统运行技术支持及项目结案** | 66d | 2012-11-01 | 2013-01-31 | 60 | 0d |  |
| 68 | 1.5.1 | 系统运行技术支持及问题解决 | 63d | 2012-11-01 | 2013-01-28 |  | 0d | start no earlier than 2012-11-01 |
| 69 | 1.5.2 | 项目验收及总结 | 3d | 2013-01-29 | 2013-01-31 | 68 | 0d |  |
